# USC AUV - Software 2012

Schedule from Planner, 2012-10-22 to 2012-12-28.

## Calendars

- Default: Mon-Fri 08:00-12:00, 13:00-17:00; Sat-Sun off.

## Resources

| Resource |
| --- |
| William Leong |
| Samir Lavingia |
| Jefferson Luu |
| Garland Chen |
| Douglass Chen |
| Dhruv |
| Mike Gerow |
| Kathryn Yu |
| Edward T. Kaszubski |

## Schedule

| ID | WBS | Task | Start | Finish | Predecessors | Work |
| --- | --- | --- | --- | --- | --- | --- |
| 1 | 1 | **Lvl 1** | 2012-10-22 | 2012-12-18 |  | 464h |
| 2 | 1.1 | **depth_calibration** | 2012-10-22 | 2012-11-02 |  | 80h |
| 3 | 1.1.1 | design | 2012-10-22 | 2012-10-22 |  | 8h |
| 4 | 1.1.2 | implement | 2012-10-23 | 2012-10-26 | 3 | 32h |
| 5 | 1.1.3 | test | 2012-10-29 | 2012-11-02 | 4 | 40h |
| 6 | 1.2 | **unit color_calibration** | 2012-10-22 | 2012-11-09 |  | 120h |
| 7 | 1.2.1 | design | 2012-10-22 | 2012-10-26 |  | 40h |
| 8 | 1.2.2 | implement | 2012-10-29 | 2012-11-02 | 7 | 40h |
| 9 | 1.2.3 | test | 2012-11-05 | 2012-11-09 | 8 | 40h |
| 10 | 1.3 | **camera_calibration** | 2012-10-22 | 2012-10-23 |  | 16h |
| 11 | 1.3.1 | test with hybrid target | 2012-10-22 | 2012-10-23 |  | 16h |
| 12 | 1.4 | **hybrid_calibration** | 2012-11-12 | 2012-11-30 | 10, 6 | 120h |
| 13 | 1.4.1 | design | 2012-11-12 | 2012-11-16 |  | 40h |
| 14 | 1.4.2 | implement | 2012-11-19 | 2012-11-23 | 13 | 40h |
| 15 | 1.4.3 | test | 2012-11-26 | 2012-11-30 | 14 | 40h |
| 16 | 1.5 | **build hybrid calibration target** | 2012-10-22 | 2012-12-18 |  | 128h |
| 17 | 1.5.1 | determine optimal size | 2012-12-03 | 2012-12-04 | 12 | 16h |
| 18 | 1.5.2 | get parts | 2012-12-05 | 2012-12-06 | 17 | 16h |
| 19 | 1.5.3 | assemble frame | 2012-12-07 | 2012-12-07 | 18 | 8h |
| 20 | 1.5.4 | determine optimal print/lamination media | 2012-10-22 | 2012-10-25 |  | 32h |
| 21 | 1.5.5 | print | 2012-12-10 | 2012-12-11 | 19, 20 | 16h |
| 22 | 1.5.6 | test | 2012-12-12 | 2012-12-18 | 21 | 40h |
| 23 | 2 | **Lvl 2** | 2012-10-22 | 2012-11-09 |  | 552h |
| 24 | 2.1 | **xsens_driver** | 2012-10-22 | 2012-11-02 |  | 120h |
| 25 | 2.1.1 | simulation | 2012-10-22 | 2012-10-26 |  | 40h |
| 26 | 2.1.2 | analyze drift properties | 2012-10-22 | 2012-10-26 |  | 40h |
| 27 | 2.1.3 | implement calibration | 2012-10-29 | 2012-11-02 | 26 | 40h |

| ID | WBS | Task | Start | Finish | Predecessors | Work |
| --- | --- | --- | --- | --- | --- | --- |
| 28 | 2.2 | **seabee_driver** | 2012-10-22 | 2012-11-02 |  | 176h |
| 29 | 2.2.1 | simulation | 2012-10-22 | 2012-10-23 |  | 16h |
| 30 | 2.2.2 | set motor values | 2012-10-22 | 2012-10-26 |  | 40h |
| 31 | 2.2.3 | read pressure, kill switch | 2012-10-22 | 2012-10-26 |  | 40h |
| 32 | 2.2.4 | display | 2012-10-22 | 2012-11-02 |  | 80h |
| 33 | 2.3 | **sonar_driver** | 2012-10-22 | 2012-11-02 |  | 136h |
| 34 | 2.3.1 | simulation | 2012-10-22 | 2012-10-23 |  | 16h |
| 35 | 2.3.2 | read data | 2012-10-22 | 2012-10-26 |  | 40h |
| 36 | 2.3.3 | fft/other analysis | 2012-10-22 | 2012-10-26 |  | 40h |
| 37 | 2.3.4 | test | 2012-10-29 | 2012-11-02 | 35, 36 | 40h |
| 38 | 2.4 | **color_classifier** | 2012-10-22 | 2012-11-09 |  | 120h |
| 39 | 2.4.1 | re-evaluate functionality | 2012-10-22 | 2012-10-26 |  | 40h |
| 40 | 2.4.2 | update functionality | 2012-10-29 | 2012-11-02 | 39 | 40h |
| 41 | 2.4.3 | test | 2012-11-05 | 2012-11-09 | 40 | 40h |
| 42 | 3 | **Lvl 3** | 2012-10-22 | 2012-11-16 |  | 352h |
| 43 | 3.1 | **seabee3_physics** | 2012-10-22 | 2012-11-16 |  | 280h |
| 44 | 3.1.1 | update drag | 2012-10-22 | 2012-10-26 |  | 40h |
| 45 | 3.1.2 | evaluate feasibility of force sensor input | 2012-10-22 | 2012-11-02 |  | 80h |
| 46 | 3.1.3 | evaluate feasibility of flow rate model | 2012-10-22 | 2012-11-02 |  | 80h |
| 47 | 3.1.4 | implement desired model | 2012-11-05 | 2012-11-09 | 45, 46 | 40h |
| 48 | 3.1.5 | test | 2012-11-12 | 2012-11-16 | 47 | 40h |
| 49 | 3.2 | **contour_finder** | 2012-10-22 | 2012-10-25 |  | 32h |
| 50 | 3.2.1 | re-evaluate functionality | 2012-10-22 | 2012-10-22 |  | 8h |
| 51 | 3.2.2 | update functionality | 2012-10-23 | 2012-10-24 | 50 | 16h |
| 52 | 3.2.3 | test | 2012-10-25 | 2012-10-25 | 51 | 8h |

| ID | WBS | Task | Start | Finish | Predecessors | Work |
| --- | --- | --- | --- | --- | --- | --- |
| 53 | 3.3 | **landmark defs** | 2012-10-22 | 2012-10-26 |  | 40h |
| 54 | 3.3.1 | design | 2012-10-22 | 2012-10-23 |  | 16h |
| 55 | 3.3.2 | implement | 2012-10-24 | 2012-10-26 | 54 | 24h |
| 56 | 4 | **Lvl 4** | 2012-10-22 | 2012-11-23 |  | 320h |
| 57 | 4.1 | **simulated_odometry** | 2012-10-22 | 2012-11-23 |  | 120h |
| 58 | 4.1.1 | design | 2012-10-22 | 2012-10-23 |  | 16h |
| 59 | 4.1.2 | implement | 2012-10-24 | 2012-10-26 | 58 | 24h |
| 60 | 4.1.3 | test IMU-derived position/velocity | 2012-11-05 | 2012-11-09 | 24, 59 | 40h |
| 61 | 4.1.4 | test IMU/physics data fusion | 2012-11-19 | 2012-11-23 | 43, 59 | 40h |
| 62 | 4.2 | **contour_matcher** | 2012-10-22 | 2012-11-09 |  | 120h |
| 63 | 4.2.1 | design | 2012-10-22 | 2012-10-26 |  | 40h |
| 64 | 4.2.2 | implement | 2012-10-29 | 2012-11-02 | 63 | 40h |
| 65 | 4.2.3 | test | 2012-11-05 | 2012-11-09 | 64 | 40h |
| 66 | 4.3 | **landmark defs** | 2012-10-22 | 2012-11-02 |  | 80h |
| 67 | 4.3.1 | design | 2012-10-22 | 2012-10-26 |  | 40h |
| 68 | 4.3.2 | implement | 2012-10-29 | 2012-11-02 | 67 | 40h |
| 69 | 5 | **Lvl 5** | 2012-10-22 | 2012-11-30 |  | 240h |
| 70 | 5.1 | **particle_filter** | 2012-10-22 | 2012-11-30 |  | 160h |
| 71 | 5.1.1 | design | 2012-10-22 | 2012-10-26 |  | 40h |
| 72 | 5.1.2 | implement | 2012-10-29 | 2012-11-09 | 71 | 80h |
| 73 | 5.1.3 | test | 2012-11-26 | 2012-11-30 | 72, 57 | 40h |
| 74 | 5.2 | **landmark recognition api** | 2012-11-05 | 2012-11-16 |  | 80h |
| 75 | 5.2.1 | implement | 2012-11-12 | 2012-11-16 | 76 | 40h |
| 76 | 5.2.2 | design | 2012-11-05 | 2012-11-09 | 66 | 40h |

| ID | WBS | Task | Start | Finish | Predecessors | Work |
| --- | --- | --- | --- | --- | --- | --- |
| 77 | 6 | **Lvl 6** | 2012-10-22 | 2012-12-28 |  | 1440h |
| 78 | 6.1 | **seabee3_localization** | 2012-10-22 | 2012-11-09 |  | 120h |
| 79 | 6.1.1 | design | 2012-10-22 | 2012-10-26 |  | 40h |
| 80 | 6.1.2 | implement | 2012-10-29 | 2012-11-02 | 79 | 40h |
| 81 | 6.1.3 | test | 2012-11-05 | 2012-11-09 | 80 | 40h |
| 82 | 6.2 | **landmark recognizers** | 2012-10-22 | 2012-12-28 |  | 1320h |
| 83 | 6.2.1 | **gate_recognizer** | 2012-10-22 | 2012-12-07 |  | 160h |
| 84 | 6.2.1.1 | design | 2012-10-22 | 2012-10-26 |  | 40h |
| 85 | 6.2.1.2 | implement | 2012-11-19 | 2012-11-23 | 74, 84 | 40h |
| 86 | 6.2.1.3 | test | 2012-11-26 | 2012-12-07 | 85 | 80h |
| 87 | 6.2.2 | **pipe_recognizer** | 2012-10-22 | 2012-12-07 |  | 160h |
| 88 | 6.2.2.1 | design | 2012-10-22 | 2012-10-26 |  | 40h |
| 89 | 6.2.2.2 | implement | 2012-11-19 | 2012-11-23 | 74, 88 | 40h |
| 90 | 6.2.2.3 | test | 2012-11-26 | 2012-12-07 | 89 | 80h |
| 91 | 6.2.3 | **buoy_recognizer** | 2012-10-22 | 2012-12-07 |  | 160h |
| 92 | 6.2.3.1 | design | 2012-10-22 | 2012-10-26 |  | 40h |
| 93 | 6.2.3.2 | implement | 2012-11-19 | 2012-11-23 | 74, 92 | 40h |
| 94 | 6.2.3.3 | test | 2012-11-26 | 2012-12-07 | 93 | 80h |
| 95 | 6.2.4 | **hedge_recognizer** | 2012-10-22 | 2012-12-07 |  | 160h |
| 96 | 6.2.4.1 | design | 2012-10-22 | 2012-10-26 |  | 40h |
| 97 | 6.2.4.2 | implement | 2012-11-19 | 2012-11-23 | 74, 96 | 40h |
| 98 | 6.2.4.3 | test | 2012-11-26 | 2012-12-07 | 97 | 80h |
| 99 | 6.2.5 | **window_recognizer** | 2012-10-22 | 2012-12-07 |  | 160h |
| 100 | 6.2.5.1 | design | 2012-10-22 | 2012-10-26 |  | 40h |
| 101 | 6.2.5.2 | implement | 2012-11-19 | 2012-11-23 | 74, 100 | 40h |
| 102 | 6.2.5.3 | test | 2012-11-26 | 2012-12-07 | 101 | 80h |

| ID | WBS | Task | Start | Finish | Predecessors | Work |
| --- | --- | --- | --- | --- | --- | --- |
| 103 | 6.2.6 | **bin_recognizer** | 2012-10-22 | 2012-12-07 |  | 200h |
| 104 | 6.2.6.1 | design | 2012-10-22 | 2012-11-02 |  | 80h |
| 105 | 6.2.6.2 | implement | 2012-11-19 | 2012-11-23 | 74, 104 | 40h |
| 106 | 6.2.6.3 | test | 2012-11-26 | 2012-12-07 | 105 | 80h |
| 107 | 6.2.7 | **pinger_recognizer** | 2012-11-05 | 2012-11-23 | 33 | 120h |
| 108 | 6.2.7.1 | design | 2012-11-05 | 2012-11-06 |  | 16h |
| 109 | 6.2.7.2 | implement | 2012-11-07 | 2012-11-09 | 108 | 24h |
| 110 | 6.2.7.3 | test | 2012-11-12 | 2012-11-23 | 109 | 80h |
| 111 | 6.2.8 | **octagon_recognizer** | 2012-11-26 | 2012-12-28 | 107 | 200h |
| 112 | 6.2.8.1 | design | 2012-11-26 | 2012-12-07 |  | 80h |
| 113 | 6.2.8.2 | implement | 2012-12-10 | 2012-12-14 | 74, 112 | 40h |
| 114 | 6.2.8.3 | test | 2012-12-17 | 2012-12-28 | 113 | 80h |
| 115 | 7 | **Lvl 7** | 2012-10-22 | 2012-11-02 |  | 240h |
| 116 | 7.1 | **seabee3_controls** | 2012-10-22 | 2012-11-02 |  | 80h |
| 117 | 7.1.1 | design | 2012-10-22 | 2012-10-23 |  | 16h |
| 118 | 7.1.2 | implement | 2012-10-24 | 2012-10-26 | 117 | 24h |
| 119 | 7.1.3 | test | 2012-10-29 | 2012-11-02 | 118 | 40h |
| 120 | 7.2 | **trajectory planning API** | 2012-10-22 | 2012-11-02 |  | 80h |
| 121 | 7.2.1 | design | 2012-10-22 | 2012-10-26 |  | 40h |
| 122 | 7.2.2 | implement | 2012-10-29 | 2012-11-02 | 121 | 40h |
| 123 | 7.3 | **landmark_map_server** | 2012-10-22 | 2012-11-02 |  | 80h |
| 124 | 7.3.1 | design | 2012-10-22 | 2012-10-23 |  | 16h |
| 125 | 7.3.2 | implement | 2012-10-24 | 2012-10-26 | 124 | 24h |
| 126 | 7.3.3 | test | 2012-10-29 | 2012-11-02 | 125 | 40h |

| ID | WBS | Task | Start | Finish | Predecessors | Work |
| --- | --- | --- | --- | --- | --- | --- |
| 127 | 8 | **Lvl 8** | 2012-10-22 | 2012-11-23 |  | 400h |
| 128 | 8.1 | **trajectory planners** | 2012-10-22 | 2012-11-23 |  | 280h |
| 129 | 8.1.1 | **linear_trajectory_planner** | 2012-10-22 | 2012-11-23 |  | 120h |
| 130 | 8.1.1.1 | design | 2012-10-22 | 2012-10-26 |  | 40h |
| 131 | 8.1.1.2 | implement | 2012-10-29 | 2012-11-02 | 130 | 40h |
| 132 | 8.1.1.3 | test | 2012-11-19 | 2012-11-23 | 43, 131 | 40h |
| 133 | 8.1.2 | **spline_trajectory_planner** | 2012-10-22 | 2012-11-23 |  | 160h |
| 134 | 8.1.2.1 | design | 2012-10-22 | 2012-11-02 |  | 80h |
| 135 | 8.1.2.2 | implement | 2012-11-05 | 2012-11-09 | 134 | 40h |
| 136 | 8.1.2.3 | test | 2012-11-19 | 2012-11-23 | 43, 135 | 40h |
| 137 | 8.2 | **trajectory_follower** | 2012-10-22 | 2012-11-16 |  | 120h |
| 138 | 8.2.1 | design | 2012-10-22 | 2012-10-26 |  | 40h |
| 139 | 8.2.2 | implement | 2012-10-29 | 2012-11-02 | 138 | 40h |
| 140 | 8.2.3 | test | 2012-11-12 | 2012-11-16 | 78, 139 | 40h |
| 141 | 9 | **Lvl 9** | 2012-10-22 | 2012-11-30 |  | 320h |
| 142 | 9.1 | **motion api** | 2012-10-22 | 2012-11-02 |  | 80h |
| 143 | 9.1.1 | design | 2012-10-22 | 2012-10-26 |  | 40h |
| 144 | 9.1.2 | implement | 2012-10-29 | 2012-11-02 | 143 | 40h |
| 145 | 9.2 | **control_script_interpreter** | 2012-10-22 | 2012-11-30 |  | 240h |
| 146 | 9.2.1 | design | 2012-10-22 | 2012-11-02 |  | 80h |
| 147 | 9.2.2 | implement | 2012-11-05 | 2012-11-16 | 142, 146 | 80h |
| 148 | 9.2.3 | test | 2012-11-19 | 2012-11-30 | 147 | 80h |
| 149 | 10 | **Lvl 10** | 2012-12-03 | 2012-12-28 |  | 1280h |
| 150 | 10.1 | **competition controllers** | 2012-12-03 | 2012-12-28 | 145 | 1280h |
| 151 | 10.1.1 | **gate_controller** | 2012-12-03 | 2012-12-28 |  | 160h |
| 152 | 10.1.1.1 | design/implement | 2012-12-03 | 2012-12-14 |  | 80h |
| 153 | 10.1.1.2 | test | 2012-12-17 | 2012-12-28 | 152 | 80h |

| ID | WBS | Task | Start | Finish | Predecessors | Work |
| --- | --- | --- | --- | --- | --- | --- |
| 154 | 10.1.2 | **pipe_controller** | 2012-12-03 | 2012-12-28 |  | 160h |
| 155 | 10.1.2.1 | design/implement | 2012-12-03 | 2012-12-14 |  | 80h |
| 156 | 10.1.2.2 | test | 2012-12-17 | 2012-12-28 | 155 | 80h |
| 157 | 10.1.3 | **buoy_controller** | 2012-12-03 | 2012-12-28 |  | 160h |
| 158 | 10.1.3.1 | design/implement | 2012-12-03 | 2012-12-14 |  | 80h |
| 159 | 10.1.3.2 | test | 2012-12-17 | 2012-12-28 | 158 | 80h |
| 160 | 10.1.4 | **hedge_controller** | 2012-12-03 | 2012-12-28 |  | 160h |
| 161 | 10.1.4.1 | design/implement | 2012-12-03 | 2012-12-14 |  | 80h |
| 162 | 10.1.4.2 | test | 2012-12-17 | 2012-12-28 | 161 | 80h |
| 163 | 10.1.5 | **window_controller** | 2012-12-03 | 2012-12-28 |  | 160h |
| 164 | 10.1.5.1 | design/implement | 2012-12-03 | 2012-12-14 |  | 80h |
| 165 | 10.1.5.2 | test | 2012-12-17 | 2012-12-28 | 164 | 80h |
| 166 | 10.1.6 | **bin_controller** | 2012-12-03 | 2012-12-28 |  | 160h |
| 167 | 10.1.6.1 | design/implement | 2012-12-03 | 2012-12-14 |  | 80h |
| 168 | 10.1.6.2 | test | 2012-12-17 | 2012-12-28 | 167 | 80h |
| 169 | 10.1.7 | **pinger_controller** | 2012-12-03 | 2012-12-28 |  | 160h |
| 170 | 10.1.7.1 | design/implement | 2012-12-03 | 2012-12-14 |  | 80h |
| 171 | 10.1.7.2 | test | 2012-12-17 | 2012-12-28 | 170 | 80h |
| 172 | 10.1.8 | **octagon_controller** | 2012-12-03 | 2012-12-28 |  | 160h |
| 173 | 10.1.8.1 | design/implement | 2012-12-03 | 2012-12-14 |  | 80h |
| 174 | 10.1.8.2 | test | 2012-12-17 | 2012-12-28 | 173 | 80h |
